Schedule from MS Project, 2020-11-06 to 2021-01-15, costs in ¥.

## Calendars

- 标准: Mon-Fri 08:00-12:00, 13:00-17:00; Sat-Sun off. Exceptions (off unless hours are given): 2020-12-27 08:00-12:00, 13:00-17:00.

## Resources

| Resource | Rate | Cost per use |
| --- | --- | --- |
| 项目经理 | 50 |  |
| UI专家 | 40 |  |
| 质量专家 | 40 |  |
| 程序员1 | 35 |  |
| 程序员2 | 35 |  |
| 程序员3 | 30 |  |
| 测试员1 | 35 |  |
| 测试员2 | 30 |  |
| 团队建设费 |  |  |
| 间接成本 |  |  |
| 测试货物 | 100 | 100 |
| 储备 |  |  |
| 需求专家 | 45 |  |
| 设计专家 | 50 |  |

## Schedule

| ID | WBS | Task | Type | Duration | Start | Finish | Predecessors | Total slack | Free slack | Constraint | Resources | Work | Cost |
| --- | --- | --- | --- | --- | --- | --- | --- | --- | --- | --- | --- | --- | --- |
| 1 | 1 | **项目启动** |  | 5d | 2020-11-06 | 2020-11-12 |  |  |  |  | 间接成本 [0.1%] | 104h | 7,800 |
| 2 | 1.1 | 组建核心团队 | manual | 1d | 2020-11-06 | 2020-11-06 |  |  |  |  | 项目经理; UI专家; 设计专家; 需求专家; 质量专家 | 40h | 1,800 |
| 3 | 1.2 | 干系人分析 |  | 1d | 2020-11-09 | 2020-11-09 | 2 | 0d |  |  | 项目经理 | 8h | 400 |
| 4 | 1.3 | 里程碑计划 |  | 1d | 2020-11-10 | 2020-11-10 | 3 | 0d |  |  | 项目经理 | 8h | 400 |
| 5 | 1.4 | 制定项目章程 |  | 1d | 2020-11-11 | 2020-11-11 | 4 | 0d |  |  | 项目经理 | 8h | 400 |
| 6 | 1.5 | 项目启动大会 |  | 1d | 2020-11-12 | 2020-11-12 | 5 | 0d |  |  | 项目经理; UI专家; 设计专家; 需求专家; 质量专家 | 40h | 1,800 |
| 7 | 2 | **需求分析** |  | 1d | 2020-11-13 | 2020-11-13 | 1 |  |  |  | 间接成本 [0.1%] | 8h | 720 |
| 8 | 2.1 | 制定需求说明 |  | 1d | 2020-11-13 | 2020-11-13 | 1 | 3d | 0d | start no earlier than 2020-11-13 | 需求专家 | 8h | 360 |
| 9 | 3 | **项目设计** |  | 5d | 2020-11-16 | 2020-11-20 | 7 |  |  |  | 间接成本 [0.1%] | 40h | 3,520 |
| 10 | 3.1 | 详细设计说明 |  | 2d | 2020-11-16 | 2020-11-17 | 8 | 3d | 0d |  | 设计专家 | 16h | 800 |
| 11 | 3.2 | 界面设计 |  | 3d | 2020-11-18 | 2020-11-20 | 10 | 41d |  | start no earlier than 2020-11-18 | UI专家 | 24h | 960 |
| 12 | 4 | **实现基础界面** |  | 9d | 2020-11-23 | 2020-12-03 | 9 |  |  |  | 间接成本 [0.1%] | 80h | 5,440 |
| 13 | 4.1 | 页面框架的实现 |  | 3d | 2020-11-23 | 2020-11-25 | 9 | 0d |  | start no earlier than 2020-11-23 | 程序员1 | 24h | 840 |
| 14 | 4.2 | 添加测试用例功能 |  | 2d | 2020-11-26 | 2020-11-27 | 13 | 0d |  |  | 程序员2 | 16h | 560 |
| 15 | 4.3 | 生成用例列表功能 |  | 1d | 2020-11-30 | 2020-11-30 | 14 | 0d |  |  | 程序员3 | 8h | 240 |
| 16 | 4.4 | 删除测试用例功能 |  | 1d | 2020-12-01 | 2020-12-01 | 15 | 0d |  |  | 程序员1 | 8h | 280 |
| 17 | 4.5 | 修改测试用例功能 |  | 1d | 2020-12-02 | 2020-12-02 | 16 | 0d |  |  | 程序员2 | 8h | 280 |
| 18 | 4.6 | 基础功能测试 |  | 1d | 2020-12-03 | 2020-12-03 | 17 | 0d |  |  | 测试员1; 测试员2 | 16h | 520 |
| 19 | 5 | **数据驱动** |  | 9d | 2020-12-04 | 2020-12-16 | 12 |  |  |  | 间接成本 [0.1%] | 80h | 5,360 |
| 20 | 5.1 | 数据库的搭建与结合 |  | 3d | 2020-12-04 | 2020-12-08 | 12 | 0d |  |  | 程序员1 | 24h | 840 |
| 21 | 5.2 | 测试团队维护 |  | 1d | 2020-12-09 | 2020-12-09 | 20 | 0d |  |  | 程序员2 | 8h | 280 |
| 22 | 5.3 | 服务信息维护 |  | 1d | 2020-12-10 | 2020-12-10 | 21 | 0d |  |  | 程序员3 | 8h | 240 |
| 23 | 5.4 | 数据库信息维护 |  | 1d | 2020-12-11 | 2020-12-11 | 22 | 0d |  |  | 程序员1 | 8h | 280 |
| 24 | 5.5 | 参数替换维护 |  | 1d | 2020-12-14 | 2020-12-14 | 23 | 0d |  |  | 程序员2 | 8h | 280 |
| 25 | 5.6 | 前置、后置动作维护 |  | 1d | 2020-12-15 | 2020-12-15 | 24 | 0d |  |  | 程序员3 | 8h | 240 |
| 26 | 5.7 | 数据维护功能测试 |  | 1d | 2020-12-16 | 2020-12-16 | 25 | 0d |  |  | 测试员1; 测试员2 | 16h | 520 |

Notes:
- 12: 实现页面的基本框架和基本功能，包括添加测试用例，生成测试用例列表，删除测试用例，修改测试用例的功能。
- 13: 包括页面的基础结构，页面的按钮和列表，页面操作的监听器框架的实现
- 14: 添加测试用例到数据库，包括用例名称，测试步骤，预期结果，测试类别的选择，设置运行时间等功能
- 15: 输入筛选条件，点击按钮，展示测试用例的筛选结果，并按列表的形式排列
- 16: 批量删除测试用例的功能，生成用例列表后通过选择和点击删除按钮删除测试用例
- 17: 在生用例列表后点击可进入修改编辑界面
- 18: 对基础功能进行测试和完善
- 19: 实现测试团队维护，服务信息维护，数据库信息维护，参数替换维护和前置、后置动作维护的功能。
- 20: 数据库的搭建和与平台的结合。

| ID | WBS | Task | Duration | Start | Finish | Predecessors | Total slack | Resources | Work | Cost |
| --- | --- | --- | --- | --- | --- | --- | --- | --- | --- | --- |
| 27 | 6 | **集成环境的搭建和结果展示** | 10d | 2020-12-17 | 2020-12-29 | 19 |  | 间接成本 [0.1%] | 96h | 5,560 |
| 28 | 6.1 | Jenkins+testNG+MySQL继承环境的搭建 | 3d | 2020-12-17 | 2020-12-21 | 19 | 0d | 程序员1 | 24h | 840 |
| 29 | 6.2 | Jenkins任务地址添加 | 2d | 2020-12-22 | 2020-12-23 | 28 | 0d | 程序员2 | 16h | 560 |
| 30 | 6.3 | **测试结果展示** | 3d | 2020-12-24 | 2020-12-27 | 29 | 0d |  | 24h | 760 |
| 31 | 6.3.1 | 查看成功率 | 1d | 2020-12-24 | 2020-12-24 | 29 | 0d | 程序员3 | 8h | 240 |
| 32 | 6.3.2 | 查看覆盖率 | 1d | 2020-12-25 | 2020-12-25 | 31 | 0d | 程序员3 | 8h | 240 |
| 33 | 6.3.3 | 用例数据统计 | 1d | 2020-12-27 | 2020-12-27 | 32 | 0d | 程序员2 | 8h | 280 |
| 34 | 6.4 | 集成环境功能测试 | 2d | 2020-12-28 | 2020-12-29 | 30 | 0d | 测试员1; 测试员2 | 32h | 1,040 |
| 35 | 7 | **页面完善和性能测试** | 10d | 2020-12-30 | 2021-01-12 | 27 |  | 间接成本 [0.1%] | 200h | 14,300 |
| 36 | 7.1 | 测试规划 | 1d | 2020-12-30 | 2020-12-30 | 27 | 0d | 测试员1 | 8h | 280 |
| 37 | 7.2 | 编写测试用例 | 2d | 2020-12-31 | 2021-01-01 | 36 | 0d | 测试员1; 测试员2 | 32h | 1,040 |
| 38 | 7.3 | 实现测试用例 | 1d | 2021-01-04 | 2021-01-04 | 37 | 0d | 测试货物; 测试员1; 测试员2 | 16h | 720 |
| 39 | 7.4 | 页面缺陷反馈和修正 | 3d | 2021-01-05 | 2021-01-07 | 38 | 0d | 测试员1; 测试员2; 程序员1; 程序员2; 程序员3 | 120h | 3,960 |
| 40 | 7.5 | 产品试运行 | 3d | 2021-01-08 | 2021-01-12 | 39 | 0d | 项目经理 | 24h | 1,200 |
| 41 | 8 | **产品报告总结和发布** | 3d | 2021-01-13 | 2021-01-15 | 35 |  | 间接成本 [0.1%] | 24h | 2,400 |
| 42 | 8.1 | 产品报告 | 2d | 2021-01-13 | 2021-01-14 | 35 | 0d | 项目经理 | 16h | 800 |
| 43 | 8.2 | 产品发布 | 1d | 2021-01-15 | 2021-01-15 | 42 | 0d | 项目经理 | 8h | 400 |

Notes:
- 30: 包括查看成功率，查看失败率和用例数据统计功能
- 39: 包括性能缺陷和页面美化
